# 质量研究

How a schedule from a web Gantt chart changed from version to version. A marks actual dates.

## Version 1 (saved 2024-07-18)

| ID | Task | Duration | Start | Finish | Complete |
| --- | --- | --- | --- | --- | --- |
| 2 | 高分子蛋白验证及报告 | 5d | 2024-07-09 | 2024-07-15 | 100% |
| 3 | 离子交换验证 | 5d | 2024-07-15 | 2024-07-19 |  |
| 4 | 蛋白质含量测定 | 1d | 2024-07-05 | 2024-07-05 | 80% |
| 5 | 电泳纯度及分子量 | 5d | 2024-07-10 | 2024-07-16 | 50% |
| 6 | 无菌验证及检测 | 10d | 2024-07-16 | 2024-07-29 |  |
| 7 | 微生物限度验证及检测 | 10d | 2024-08-05 | 2024-08-16 |  |
| 8 | 细菌内毒素验证及检测 | 3d | 2024-08-19 | 2024-08-21 |  |
| 9 | 常量 | 5d | 2024-08-12 | 2024-08-16 |  |
| 10 | 宿主蛋白残留验证 | 5d | 2024-09-02 | 2024-09-06 |  |
| 11 | 宿主DNA残留验证 | 5d | 2024-09-09 | 2024-09-13 |  |
| 12 | 生物学活性方法验证 | 10d | 2024-09-16 | 2024-09-27 |  |
| 13 | 肽图验证及检测 | 5d | 2024-10-21 | 2024-10-25 |  |
| 14 | 卡那霉素残留验证 | 5d | 2024-10-14 | 2024-10-18 |  |
| 15 | IPTG残留验证 | 5d | 2024-11-04 | 2024-11-08 |  |
| 16 | 质量控制资料 | 60d | 2024-07-05 | 2024-09-26 | 5% |
| 17 | 反复冻融 | 10d | 2024-08-19 | 2024-08-30 |  |
| 18 | 影响因素 | 24d | 2024-08-19 | 2024-09-19 |  |
| 19 | 加速和长期1月 | 5d | 2024-09-19 | 2024-09-25 |  |
| 20 | 加速和长期2月 | 6d | 2024-10-21 | 2024-10-28 |  |
| 21 | 加速和长期3月 | 5d | 2024-11-21 | 2024-11-27 |  |
| 22 | 加速和长期6月 | 15d | 2025-02-20 | 2025-03-12 |  |
| 23 | 长期9月 | 5d | 2025-05-21 | 2025-05-27 |  |
| 24 | 长期12月 | 15d | 2025-08-21 | 2025-09-10 |  |
| 25 | 长期18月 | 15d | 2025-11-20 | 2025-12-10 |  |
| 26 | 长期24月 | 15d | 2026-08-20 | 2026-09-09 |  |
| 27 | 稳定性考察资料 | 10d | 2024-07-26 | 2024-08-08 |  |
| 28 | 特性鉴定及资料 | 10d | 2024-09-02 | 2024-09-13 |  |
| 29 | DCP2301高分子蛋白验证 | 15d | 2024-07-05 | 2024-07-25 |  |
| 30 | DCP2301含量（反相）验证 | 5d | 2024-07-22 | 2024-07-26 |  |
| 31 | DCP2301离子交换验证 | 5d | 2024-07-19 | 2024-07-25 |  |
| 32 | DCP2301蛋白质含量 | 1d | 2024-07-22 | 2024-07-22 |  |
| 33 | DCP2301电泳纯度及分子量 | 3d | 2024-07-15 | 2024-07-17 | 80% |
| 34 | DCP2301常量 | 1d | 2024-07-05 | 2024-07-05 |  |
| 35 | DCP2301质量控制资料（附件） | 1d | 2024-07-05 | 2024-07-05 | 10% |
| 36 | DCP2301反复冻融 | 4d | 2024-08-05 | 2024-08-08 |  |
| 37 | DCP2301影响因素 | 3d | 2024-08-05 | 2024-08-07 |  |
| 38 | DCP2301长期1月 | 2d | 2024-09-05 | 2024-09-06 |  |
| 39 | DCP2301长期2月 | 2d | 2024-10-08 | 2024-10-09 |  |
| 40 | DCP2301长期3月 | 2d | 2024-11-05 | 2024-11-06 |  |
| 41 | DCP2301长期6月 | 2d | 2025-07-07 | 2025-07-08 |  |
| 42 | DCP2301长期9月 | 2d | 2024-07-05 | 2024-07-08 |  |
| 43 | DCP2301长期12月 | 2d | 2024-07-05 | 2024-07-08 |  |
| 44 | DCP2301长期18月 | 2d | 2024-07-05 | 2024-07-08 |  |
| 45 | DCP2301长期24月 | 2d | 2024-07-05 | 2024-07-08 |  |
| 46 | KCM05质量控制资料（附件） | 5d | 2024-07-05 | 2024-07-11 | 20% |
| 47 | KCM05长期1月 | 1d | 2024-06-11 | 2024-06-11 | 100% |
| 48 | KCM05长期2月 | 1d | 2024-07-11 | 2024-07-11 | 100% |
| 49 | KCM05长期3月 | 1d | 2024-08-12 | 2024-08-12 | 100% |
| 50 | KCM05长期6月 | 1d | 2024-11-11 | 2024-11-11 |  |
| 51 | KCM05长期9月 | 1d | 2025-02-11 | 2025-02-11 |  |
| 52 | KCM05长期12月 | 1d | 2024-05-10 | 2024-05-10 |  |
| 53 | KCM05长期18月 | 1d | 2025-11-11 | 2025-11-11 |  |
| 54 | KCM05长期24月 | 1d | 2026-05-11 | 2026-05-11 |  |

## Version 2 (saved 2024-07-18)

Last finish 2026-09-09 → 2026-09-02 (-7d).

Changed:

| ID | Task | Finish | Duration | Complete |
| --- | --- | --- | --- | --- |
| 3 | 离子交换验证 | 2024-07-19 → 2024-07-26 (+7d) | 5d → 10d |  |
| 4 | 蛋白质含量测定 | 2024-07-05 → 2024-07-09 (+4d) | 1d → 3d |  |
| 5 | 电泳纯度及分子量 |  |  | 50% → 80% |
| 10 | 宿主蛋白残留验证 | 2024-09-06 → 2024-09-13 (+7d) | 5d → 10d |  |
| 11 | 宿主DNA残留验证 | 2024-09-13 → 2024-09-20 (+7d) | 5d → 10d |  |
| 18 | 影响因素 | 2024-09-19 → 2024-08-30 (-20d) | 24d → 10d |  |
| 20 | 加速和长期2月 | 2024-10-28 → 2024-10-25 (-3d) | 6d → 5d |  |
| 22 | 加速和长期6月 | 2025-03-12 → 2025-03-05 (-7d) | 15d → 10d |  |
| 24 | 长期12月 | 2025-09-10 → 2025-09-03 (-7d) | 15d → 10d |  |
| 25 | 长期18月 | 2025-12-10 → 2025-12-03 (-7d) | 15d → 10d |  |
| 26 | 长期24月 | 2026-09-09 → 2026-09-02 (-7d) | 15d → 10d |  |

## Version 3 (saved 2024-07-19)

Last finish stays 2026-09-02.

Changed:

| ID | Task | Start | Finish |
| --- | --- | --- | --- |
| 6 | 无菌验证及检测 | 2024-07-16 → 2024-07-17 (+1d) | 2024-07-29 → 2024-07-30 (+1d) |

## Version 4 (saved 2024-07-26)

Last finish stays 2026-09-02.

Changed:

| ID | Task | Finish | Duration |
| --- | --- | --- | --- |
| 16 | 质量控制资料 | 2024-09-26 → 2024-08-29 (-28d) | 60d → 40d |

## Version 5 (saved 2024-08-09)

Last finish stays 2026-09-02. Complete tasks 4 → 5.

Changed:

| ID | Task | Start | Finish | Complete |
| --- | --- | --- | --- | --- |
| 15 | IPTG残留验证 |  |  | 0% → 80% |
| 29 | DCP2301高分子蛋白验证 |  |  | 0% → 80% |
| 30 | DCP2301含量（反相）验证 |  |  | 0% → 80% |
| 31 | DCP2301离子交换验证 |  |  | 0% → 80% |
| 32 | DCP2301蛋白质含量 |  |  | 0% → 100% |
| 36 | DCP2301反复冻融 |  |  | 0% → 20% |
| 37 | DCP2301影响因素 |  |  | 0% → 40% |
| 52 | KCM05长期12月 | 2024-05-10 → 2025-05-12 (+367d) | 2024-05-10 → 2025-05-12 (+367d) |  |
